# National Heatlh Campaign

Schedule from MS Project, 2024-03-01 to 2024-05-06, costs in €, A marks actual dates.
Research Programme
ABC research Ltd.

## Calendars

- Standard: Mon-Fri 08:00-12:00, 13:00-17:00; Sat-Sun off.

## Resources

| Resource | Group | Rate |
| --- | --- | --- |
| Joanne Kelly | Management | 19.23 |
| Riona Carr | Executive | 6.25 |
| Mary Breen | Management | 19.23 |
| Tom Joyce | Office Staff | 6.88 |
| Conf Room | Facilities |  |
| Junior Staff | Office Staff | 3.75 |
| Printing | External |  |

## Schedule

| ID | WBS | Task | Type | Duration | Start | Finish | Predecessors | Complete | Remaining | Baseline start | Baseline finish | Baseline duration | Total slack | Free slack | Constraint | Resources | Work | Actual work | Cost | Baseline cost | Actual cost |
| --- | --- | --- | --- | --- | --- | --- | --- | --- | --- | --- | --- | --- | --- | --- | --- | --- | --- | --- | --- | --- | --- |
| 1 | 1 | **National Health Campaign** |  | 47d? | 2024-03-01 A | 2024-05-06 |  | 4% | 44.93d? | 2024-03-01 | 2024-05-06 | 47d? |  |  |  |  | 448h | 16h | 4,314.42 | 4,314.42 | 307.69 |
| 2 | 1.1 | **Survey setup** |  | 17.5d | 2024-03-01 A | 2024-03-26 |  | 10% | 15.83d | 2024-03-01 | 2024-03-26 | 17.5d | 29.5d |  |  |  | 172h | 16h | 960.19 | 960.19 | 307.69 |
| 3 | 1.1.1 | **Planning** |  | 8d | 2024-03-01 A | 2024-03-12 |  | 18% | 6.55d | 2024-03-01 | 2024-03-12 | 8d | 29.5d | 0d |  |  | 88h | 16h | 487.69 | 487.69 | 307.69 |
| 4 | 1.1.1.1 | Design Questionnaire |  | 2d | 2024-03-01 A | 2024-03-04 A |  | 100% |  | 2024-03-01 | 2024-03-04 | 2d |  |  |  | Joanne Kelly | 16h | 16h | 307.69 | 307.69 | 307.69 |
| 5 | 1.1.1.2 | Type Questionnaire |  | 1d | 2024-03-05 | 2024-03-05 | 4 |  |  | 2024-03-05 | 2024-03-05 | 1d | 29.5d | 0d | start no earlier than 2024-03-05 | Junior Staff | 8h |  | 30 | 30 |  |
| 6 | 1.1.1.3 | Print Questionnaire |  | 1w | 2024-03-06 | 2024-03-12 | 5 |  |  | 2024-03-06 | 2024-03-12 | 1w | 29.5d | 0d |  | Printing | 40h |  |  |  |  |
| 7 | 1.1.1.4 | Invite interviewers to briefing meeting |  | 3d | 2024-03-06 | 2024-03-08 | 6SS |  |  | 2024-03-06 | 2024-03-08 | 3d | 31.5d | 0d |  | Riona Carr | 24h |  | 150 | 150 |  |
| 8 | 1.1.1.5 | Survey planning complete | milestone | 0d | 2024-03-08 | 2024-03-08 | 7 |  |  | 2024-03-08 | 2024-03-08 | 0d | 31.5d |  |  |  |  |  |  |  |  |
| 9 | 1.1.2 | **Briefing Setup** |  | 9.5d | 2024-03-13 | 2024-03-26 | 3 |  |  | 2024-03-13 | 2024-03-26 | 9.5d | 29.5d |  |  |  | 84h |  | 472.5 | 472.5 |  |
| 10 | 1.1.2.1 | Book conferenece room for briefing meeting |  | 4h | 2024-03-13 | 2024-03-13 | 6 |  |  | 2024-03-13 | 2024-03-13 | 4h | 29.5d | 0d |  | Tom Joyce | 4h |  | 27.5 | 27.5 |  |
| 11 | 1.1.2.2 | Contact interviewing locations |  | 2d | 2024-03-13 | 2024-03-14 | 10SS |  |  | 2024-03-13 | 2024-03-14 | 2d | 29.5d | 0d |  | Tom Joyce | 16h |  | 110 | 110 |  |
| 12 | 1.1.2.3 | Prepare rosters |  | 4d | 2024-03-15 | 2024-03-20 | 11 |  |  | 2024-03-15 | 2024-03-20 | 4d | 29.5d | 0d |  | Tom Joyce | 32h |  | 220 | 220 |  |
| 13 | 1.1.2.4 | Prepare packs for each interviewers |  | 3d | 2024-03-21 | 2024-03-25 | 12 |  |  | 2024-03-21 | 2024-03-25 | 3d | 29.5d | 0d |  | Junior Staff | 24h |  | 90 | 90 |  |
| 14 | 1.1.2.5 | Briefing meeting with interviewers |  | 4h | 2024-03-26 | 2024-03-26 | 13 |  |  | 2024-03-26 | 2024-03-26 | 4h | 29.5d | 0d |  | Conf Room; Riona Carr | 8h |  | 25 | 25 |  |
| 15 | 1.1.2.6 | Interviewers briefing complete | milestone | 0d | 2024-03-26 | 2024-03-26 | 14 |  |  | 2024-03-26 | 2024-03-26 | 0d | 29.5d |  |  |  |  |  |  |  |  |
| 16 | 1.2 | **Data Processing** |  | 9.5d | 2024-03-26 | 2024-04-08 |  |  |  | 2024-03-26 | 2024-04-08 | 9.5d |  |  |  |  | 148h |  | 892.69 | 892.69 |  |
| 17 | 1.2.1 | Prepare book-in forms |  | 2d | 2024-03-26 | 2024-03-27 |  |  |  | 2024-03-26 | 2024-03-27 | 2d | 16d | 0d |  | Riona Carr | 16h |  | 100 | 100 |  |
| 18 | 1.2.2 | Check questionnaires |  | 2d | 2024-03-28 | 2024-03-29 | 17 |  |  | 2024-03-28 | 2024-03-29 | 2d | 16d | 3.5d |  | Junior Staff | 16h |  | 60 | 60 |  |
| 19 | 1.2.3 | Code questionnaires |  | 1.5w | 2024-03-26 | 2024-04-04 | 18FF |  |  | 2024-03-26 | 2024-04-04 | 1.5w | 12.5d | 0d |  | Junior Staff | 60h |  | 225 | 225 |  |
| 20 | 1.2.4 | Input data in computer |  | 3d | 2024-04-01 | 2024-04-04 | 19FS-3d |  |  | 2024-04-01 | 2024-04-04 | 3d | 12.5d | 0d |  | Junior Staff | 24h |  | 90 | 90 |  |
| 21 | 1.2.5 | Analyse the data |  | 2d | 2024-04-04 | 2024-04-08 | 20 |  |  | 2024-04-04 | 2024-04-08 | 2d | 12.5d | 0d |  | Joanne Kelly; Tom Joyce | 32h |  | 417.69 | 417.69 |  |
| 22 | 1.2.6 | Data processing complete | milestone | 0d | 2024-04-08 | 2024-04-08 | 21 |  |  | 2024-04-08 | 2024-04-08 | 0d | 12.5d |  |  |  |  |  |  |  |  |
| 23 | 1.3 | **Interpretation** |  | 8d | 2024-04-08 | 2024-04-18 | 16 |  |  | 2024-04-08 | 2024-04-18 | 8d | 12.5d |  |  |  | 128h |  | 2,461.54 | 2,461.54 |  |
| 24 | 1.3.1 | Prepare presentation |  | 3d | 2024-04-08 | 2024-04-11 |  |  |  | 2024-04-08 | 2024-04-11 | 3d | 12.5d | 0d |  | Mary Breen; Joanne Kelly | 48h |  | 923.08 | 923.08 |  |
| 25 | 1.3.2 | Prepare research report |  | 1w | 2024-04-11 | 2024-04-18 | 24 |  |  | 2024-04-11 | 2024-04-18 | 1w | 12.5d | 0d |  | Mary Breen; Joanne Kelly | 80h |  | 1,538.46 | 1,538.46 |  |
| 26 | 1.3.3 | Project Complete | milestone | 0d | 2024-04-18 | 2024-04-18 | 25 |  |  | 2024-04-18 | 2024-04-18 | 0d | 12.5d |  |  |  |  |  |  |  |  |
